# Gant1

Schedule from MS Project, 2020-10-03 to 2020-12-15, status date 2020-10-04, costs in ريال, A marks actual dates.

## Calendars

- Date: Mon-Fri 08:00-12:00, 13:00-17:00; Sat-Sun off. Exceptions (off unless hours are given): 2020-10-03 to 2021-07-07 08:00-12:00, 13:00-17:00 (روز کاری, recurring), 2020-10-03 to 2022-09-02 (تعطیلات آخر هفته, recurring).

## Resources

| Resource | Rate |
| --- | --- |
| مهندس بقایی |  |
| مهندس جعفری | 300000 |
| آقای بقایی |  |

## Schedule

| ID | WBS | Task | Type | Duration | Start | Finish | Predecessors | Complete | Remaining | Baseline start | Baseline finish | Baseline duration | Total slack | Free slack | Constraint | Resources | Work | Actual work | Cost | Baseline cost | Actual cost | StartShamsi | FinishShamsi |
| --- | --- | --- | --- | --- | --- | --- | --- | --- | --- | --- | --- | --- | --- | --- | --- | --- | --- | --- | --- | --- | --- | --- | --- |
| 1 | 1 | **پروژه مواد شیمیایی** |  | 54d | 2020-10-03 A | 2020-12-15 |  | 15% | 45.88d | 2020-10-03 | 2020-12-06 | 47d | 0d |  |  |  | 1384h | 240h | 472,800,000 | 447,200,000 | 80,000,000 | 1399/7/12 | 1399/9/25 |
| 2 | 1.1 | تهیه و تایید گانت چارت |  | 2d | 2020-10-03 A | 2020-10-04 A |  | 100% |  | 2020-10-03 | 2020-10-04 | 2d |  |  |  | آقای بقایی; مهندس بقایی; مهندس جعفری | 48h | 48h | 17,600,000 | 17,600,000 | 17,600,000 | 1399/7/12 | 1399/7/13 |
| 3 | 1.2 | تهیه نیازمندی های بازار مواد شیمیایی |  | 2d | 2020-10-05 A | 2020-10-06 A | 2 | 100% |  | 2020-10-05 | 2020-10-05 | 1d |  |  |  | آقای بقایی; مهندس جعفری; مهندس بقایی | 48h | 48h | 17,600,000 | 8,800,000 | 17,600,000 | 1399/7/14 | 1399/7/15 |
| 4 | 1.3 | تهیه انتظارات و خروجی نرم افزار برای رفع نیاز بازار |  | 1d | 2020-10-07 A | 2020-10-07 A | 3 | 100% |  | 2020-10-06 | 2020-10-06 | 1d |  |  |  | آقای بقایی; مهندس بقایی; مهندس جعفری | 24h | 24h | 8,800,000 | 8,800,000 | 8,800,000 | 1399/7/16 | 1399/7/16 |
| 5 | 1.4 | تهیه تحلیل کلی اپلیکیشن و خروجی مطلوب |  | 6d | 2020-10-10 A | 2020-10-17 A | 4 | 100% |  | 2020-10-07 | 2020-10-14 | 6d |  |  |  | مهندس جعفری | 48h | 48h | 14,400,000 | 14,400,000 | 14,400,000 | 1399/7/19 | 1399/7/26 |
| 6 | 1.5 | تایید تحلیل کلی اپلیکیشن و خروجی مطلوب |  | 1d | 2020-10-18 | 2020-10-18 | 5 |  |  | 2020-10-17 | 2020-10-17 | 1d | 40d | 0d |  | آقای بقایی | 8h |  | 4,000,000 | 4,000,000 |  | 1399/7/27 | 1399/7/27 |
| 7 | 1.6 | تعیین ابزار و نرم افزارهای مورد استفاده در تولید |  | 1d | 2020-10-05 A | 2020-10-05 A | 2 | 100% |  | 2020-10-05 | 2020-10-05 | 1d |  |  |  | مهندس بقایی | 8h | 8h | 2,400,000 | 2,400,000 | 2,400,000 | 1399/7/14 | 1399/7/14 |
| 8 | 1.7 | تهیه سند تحلیل و شمای کلی |  | 2d | 2020-10-19 | 2020-10-20 | 6 |  |  | 2020-10-18 | 2020-10-19 | 2d | 40d |  |  | مهندس جعفری | 16h |  | 4,800,000 | 4,800,000 |  | 1399/7/28 | 1399/7/29 |
| 9 | 1.8 | تهیه چک لیست نیازمندی های اپلیکیشن |  | 1d | 2020-10-06 A | 2020-10-06 A | 2 | 100% |  | 2020-10-05 | 2020-10-05 | 1d |  |  |  | مهندس جعفری | 8h | 8h | 2,400,000 | 2,400,000 | 2,400,000 | 1399/7/15 | 1399/7/15 |
| 10 | 1.9 | تهیه فرم های ابتدایی جهت ارائه داخلی | milestone | 0d | 2020-10-06 A | 2020-10-06 A | 9 | 100% |  | 2020-10-06 | 2020-10-06 | 1d |  |  |  | مهندس بقایی |  |  |  | 2,400,000 |  | 1399/7/15 | 1399/7/15 |
| 11 | 1.10 | تهیه سندابزار مورد استفاده و نقشه راه |  | 1d | 2020-10-07 A | 2020-10-07 A | 7 | 100% |  | 2020-10-06 | 2020-10-06 | 1d |  |  |  | مهندس جعفری | 8h | 8h | 2,400,000 | 2,400,000 | 2,400,000 | 1399/7/16 | 1399/7/16 |
| 12 | 1.11 | بررسی و تایید سندابزار مورد استفاده و نقشه راه | milestone | 0d | 2020-10-07 A | 2020-10-07 A | 11 | 100% |  | 2020-10-07 | 2020-10-07 | 1d |  |  |  | مهندس بقایی |  |  |  | 2,400,000 |  | 1399/7/16 | 1399/7/16 |
| 13 | 1.12 | تست فرم های ابتدایی و ارائه نظر کارشناسی به صورت رسمی | milestone | 0d | 2020-10-06 A | 2020-10-06 A | 10 | 100% |  | 2020-10-07 | 2020-10-07 | 1d |  |  |  | مهندس جعفری |  |  |  | 2,400,000 |  | 1399/7/15 | 1399/7/15 |
| 14 | 1.13 | رفع ایرادات احتمالی | milestone | 0d | 2020-10-06 A | 2020-10-06 A | 13 | 100% |  | 2020-10-10 | 2020-10-10 | 1d |  |  |  | مهندس بقایی |  |  |  | 2,400,000 |  | 1399/7/15 | 1399/7/15 |
| 15 | 1.14 | تهیه تحلیل نسخه مقدماتی اپلیکیشن |  | 1d | 2020-10-10 | 2020-10-10 | 12 |  |  | 2020-10-10 | 2020-10-10 | 1d | 45d | 0d |  | مهندس جعفری | 8h |  | 2,400,000 | 2,400,000 |  | 1399/7/19 | 1399/7/19 |
| 16 | 1.15 | طراحی بانک داده و پیش نویس سند |  | 1d | 2020-10-11 | 2020-10-11 | 15 |  |  | 2020-10-11 | 2020-10-11 | 1d | 45d | 0d |  | مهندس بقایی | 8h |  | 2,400,000 | 2,400,000 |  | 1399/7/20 | 1399/7/20 |
| 17 | 1.16 | شماتیک کلی اپلیکیشن |  | 1d | 2020-10-07 A | 2020-10-07 A | 14 | 100% |  | 2020-10-11 | 2020-10-11 | 1d |  |  |  | مهندس جعفری | 8h | 8h | 2,400,000 | 2,400,000 | 2,400,000 | 1399/7/16 | 1399/7/16 |
| 18 | 1.17 | پیاده سازی نسخه مقدماتی اپلیکیشن |  | 30d | 2020-10-10 A | 2020-11-18 | 17 | 17% | 25d | 2020-10-12 | 2020-11-22 | 30d | 19d | 0d |  | مهندس بقایی | 240h | 40h | 72,000,000 | 72,000,000 | 12,000,000 | 1399/7/19 | 1399/8/28 |
| 19 | 1.18 | تهیه سند بانک داده |  | 2d | 2020-10-12 | 2020-10-13 | 16 |  |  | 2020-10-12 | 2020-10-13 | 2d | 45d |  | start no earlier than 2020-10-12 | مهندس جعفری | 16h |  | 4,800,000 | 4,800,000 |  | 1399/7/21 | 1399/7/22 |
| 20 | 1.19 | تست نسخه مقدماتی اپلیکیشن |  | 41d | 2020-10-12 | 2020-12-15 | 18SS+2d |  |  | 2020-10-14 | 2020-11-24 | 30d | 0d |  | start no earlier than 2020-09-21 | مهندس جعفری | 328h |  | 98,400,000 | 72,000,000 |  | 1399/7/21 | 1399/9/25 |
| 21 | 1.20 | تحویل فرم های آماده شده |  | 30d | 2020-10-21 | 2020-12-01 | 20SS+7d |  |  | 2020-10-25 | 2020-12-05 | 30d | 10d |  |  | آقای بقایی; مهندس جعفری | 480h |  | 192,000,000 | 192,000,000 |  | 1399/7/30 | 1399/9/11 |
| 22 | 1.21 | رفع خطاهای کشف شده در تست |  | 10d | 2020-11-23 | 2020-12-06 |  |  |  | 2020-11-23 | 2020-12-06 | 10d | 7d |  | start no earlier than 2020-11-23 | مهندس بقایی | 80h |  | 24,000,000 | 24,000,000 |  | 1399/9/3 | 1399/9/16 |
