# D:\BaharanSystem\Documents\GantChart

Schedule from MS Project, 2020-10-03 to 2021-01-24, status date 2020-10-04, costs in ريال, A marks actual dates.

## Calendars

- Date: Mon-Fri 08:00-12:00, 13:00-17:00; Sat-Sun off. Exceptions (off unless hours are given): 2020-10-03 to 2021-07-07 08:00-12:00, 13:00-17:00 (روز کاری, recurring), 2020-10-03 to 2022-09-02 (تعطیلات آخر هفته, recurring).

## Resources

| Resource | Rate |
| --- | --- |
| مهندس بقایی |  |
| مهندس جعفری | 300000 |
| آقای بقایی |  |

## Schedule

| ID | WBS | Task | Type | Duration | Start | Finish | Predecessors | Complete | Remaining | Baseline start | Baseline finish | Baseline duration | Baseline 1 start | Baseline 1 finish | Total slack | Free slack | Constraint | Resources | Work | Actual work | Cost | Baseline cost | Actual cost | StartShamsi | FinishShamsi |
| --- | --- | --- | --- | --- | --- | --- | --- | --- | --- | --- | --- | --- | --- | --- | --- | --- | --- | --- | --- | --- | --- | --- | --- | --- | --- |
| 1 | 1 | **پروژه مواد شیمیایی** |  | 82d? | 2020-10-03 A | 2021-01-24 |  | 20% | 65.75d? | 2020-10-03 | 2020-12-06 | 47d | 2020-10-03 | 2021-01-09 | 0d |  |  |  | 2480h | 432h | 819,200,000 | 447,200,000 | 137,600,000 | 1399/7/12 | 1399/11/5 |
| 2 | 1.1 | تهیه و تایید گانت چارت |  | 2d | 2020-10-03 A | 2020-10-04 A |  | 100% |  | 2020-10-03 | 2020-10-04 | 2d | 2020-10-03 | 2020-10-04 |  |  |  | آقای بقایی; مهندس بقایی; مهندس جعفری | 48h | 48h | 17,600,000 | 17,600,000 | 17,600,000 | 1399/7/12 | 1399/7/13 |
| 3 | 1.2 | تهیه نیازمندی های بازار مواد شیمیایی |  | 2d | 2020-10-05 A | 2020-10-06 A | 2 | 100% |  | 2020-10-05 | 2020-10-05 | 1d | 2020-10-05 | 2020-10-06 |  |  |  | آقای بقایی; مهندس جعفری; مهندس بقایی | 48h | 48h | 17,600,000 | 8,800,000 | 17,600,000 | 1399/7/14 | 1399/7/15 |
| 4 | 1.3 | تهیه انتظارات و خروجی نرم افزار برای رفع نیاز بازار |  | 1d | 2020-10-07 A | 2020-10-07 A | 3 | 100% |  | 2020-10-06 | 2020-10-06 | 1d | 2020-10-07 | 2020-10-07 |  |  |  | آقای بقایی; مهندس بقایی; مهندس جعفری | 24h | 24h | 8,800,000 | 8,800,000 | 8,800,000 | 1399/7/16 | 1399/7/16 |
| 5 | 1.4 | تهیه تحلیل کلی اپلیکیشن و خروجی مطلوب |  | 6d | 2020-10-10 A | 2020-10-17 A | 4 | 100% |  | 2020-10-07 | 2020-10-14 | 6d | 2020-10-10 | 2020-10-17 |  |  |  | مهندس جعفری | 48h | 48h | 14,400,000 | 14,400,000 | 14,400,000 | 1399/7/19 | 1399/7/26 |
| 6 | 1.5 | تایید تحلیل کلی اپلیکیشن و خروجی مطلوب |  | 1d | 2020-10-18 | 2020-10-18 | 5 |  |  | 2020-10-17 | 2020-10-17 | 1d | 2020-10-18 | 2020-10-18 | 70d |  |  | آقای بقایی | 8h |  | 4,000,000 | 4,000,000 |  | 1399/7/27 | 1399/7/27 |
| 7 | 1.6 | تعیین ابزار و نرم افزارهای مورد استفاده در تولید |  | 1d | 2020-10-05 A | 2020-10-05 A | 2 | 100% |  | 2020-10-05 | 2020-10-05 | 1d | 2020-10-05 | 2020-10-05 |  |  |  | مهندس بقایی | 8h | 8h | 2,400,000 | 2,400,000 | 2,400,000 | 1399/7/14 | 1399/7/14 |
| 8 | 1.7 | تهیه سند تحلیل و شمای کلی |  | 2d | 2020-10-19 A | 2020-10-20 A | 6 | 100% |  | 2020-10-18 | 2020-10-19 | 2d | 2020-10-19 | 2020-10-20 |  |  |  | مهندس جعفری | 16h | 16h | 4,800,000 | 4,800,000 | 4,800,000 | 1399/7/28 | 1399/7/29 |
| 9 | 1.8 | تهیه چک لیست نیازمندی های اپلیکیشن |  | 1d | 2020-10-06 A | 2020-10-06 A | 2 | 100% |  | 2020-10-05 | 2020-10-05 | 1d | 2020-10-06 | 2020-10-06 |  |  |  | مهندس جعفری | 8h | 8h | 2,400,000 | 2,400,000 | 2,400,000 | 1399/7/15 | 1399/7/15 |
| 10 | 1.9 | تهیه فرم های ابتدایی جهت ارائه داخلی | milestone | 0d | 2020-10-06 A | 2020-10-06 A | 9 | 100% |  | 2020-10-06 | 2020-10-06 | 1d | 2020-10-06 | 2020-10-06 |  |  |  | مهندس بقایی |  |  |  | 2,400,000 |  | 1399/7/15 | 1399/7/15 |
| 11 | 1.10 | تهیه سندابزار مورد استفاده و نقشه راه |  | 1d | 2020-10-07 A | 2020-10-07 A | 7 | 100% |  | 2020-10-06 | 2020-10-06 | 1d | 2020-10-07 | 2020-10-07 |  |  |  | مهندس جعفری | 8h | 8h | 2,400,000 | 2,400,000 | 2,400,000 | 1399/7/16 | 1399/7/16 |
| 12 | 1.11 | بررسی و تایید سندابزار مورد استفاده و نقشه راه | milestone | 0d | 2020-10-07 A | 2020-10-07 A | 11 | 100% |  | 2020-10-07 | 2020-10-07 | 1d | 2020-10-07 | 2020-10-07 |  |  |  | مهندس بقایی |  |  |  | 2,400,000 |  | 1399/7/16 | 1399/7/16 |
| 13 | 1.12 | تست فرم های ابتدایی و ارائه نظر کارشناسی به صورت رسمی | milestone | 0d | 2020-10-06 A | 2020-10-06 A | 10 | 100% |  | 2020-10-07 | 2020-10-07 | 1d | 2020-10-06 | 2020-10-06 |  |  |  | مهندس جعفری |  |  |  | 2,400,000 |  | 1399/7/15 | 1399/7/15 |
| 14 | 1.13 | رفع ایرادات احتمالی | milestone | 0d | 2020-10-06 A | 2020-10-06 A | 13 | 100% |  | 2020-10-10 | 2020-10-10 | 1d | 2020-10-06 | 2020-10-06 |  |  |  | مهندس بقایی |  |  |  | 2,400,000 |  | 1399/7/15 | 1399/7/15 |
| 15 | 1.14 | تهیه تحلیل نسخه مقدماتی اپلیکیشن |  | 1d | 2020-10-10 | 2020-10-10 | 12 |  |  | 2020-10-10 | 2020-10-10 | 1d | 2020-10-10 | 2020-10-10 | 76d |  |  | مهندس جعفری | 8h |  | 2,400,000 | 2,400,000 |  | 1399/7/19 | 1399/7/19 |
| 16 | 1.15 | شماتیک کلی اپلیکیشن |  | 1d | 2020-10-07 A | 2020-10-07 A | 14 | 100% |  | 2020-10-11 | 2020-10-11 | 1d | 2020-10-07 | 2020-10-07 |  |  |  | مهندس جعفری | 8h | 8h | 2,400,000 | 2,400,000 | 2,400,000 | 1399/7/16 | 1399/7/16 |
| 17 | 1.16 | مطالعه پیرامون زیر ساخت اپلیکیشن |  | 9d? | 2020-10-03 A | 2020-10-13 A | 14 | 100% |  |  |  |  |  |  |  |  | finish no earlier than 2020-10-13 | مهندس بقایی | 72h | 72h | 21,600,000 |  | 21,600,000 | 1399/7/12 | 1399/7/22 |
| 18 | 1.17 | react native و VUE nativeمقایسه بین |  | 5d | 2020-10-14 A | 2020-10-20 A |  | 100% |  |  |  |  |  |  |  |  |  | مهندس بقایی | 48h | 48h | 14,400,000 |  | 14,400,000 | 1399/7/23 | 1399/7/29 |
| 19 | 1.18 | **کد نویسی** |  | 58d | 2020-10-21 A | 2021-01-10 |  | 21% | 46d |  |  |  | 2020-10-10 | 2020-12-26 | 7d |  |  |  | 768h | 96h | 230,400,000 |  | 28,800,000 | 1399/7/30 | 1399/10/21 |
| 20 | 1.18.1 | پیاده سازی زیر ساخت اپلیکیشن |  | 14d | 2020-10-21 A | 2020-11-09 | 18 | 86% | 2d | 2020-10-12 | 2020-11-22 | 30d | 2020-10-10 | 2020-10-27 | 7d | 0d |  | مهندس بقایی | 112h | 96h | 33,600,000 | 72,000,000 | 28,800,000 | 1399/7/30 | 1399/8/19 |
| 21 | 1.18.2 | ردیابی |  | 2d | 2020-11-10 | 2020-11-11 | 20 |  |  |  |  |  |  |  | 7d | 0d |  | مهندس بقایی; مهندس جعفری | 32h |  | 9,600,000 |  |  | 1399/8/20 | 1399/8/21 |
| 22 | 1.18.3 | احراز هویت |  | 2d | 2020-11-14 | 2020-11-15 | 21 |  |  |  |  |  | 2020-10-28 | 2020-10-31 | 7d | 0d |  | مهندس بقایی | 16h |  | 4,800,000 |  |  | 1399/8/24 | 1399/8/25 |
| 23 | 1.18.4 | فرمهای اصلی اپلیکیشن |  | 14d | 2020-11-16 | 2020-12-05 | 22 |  |  |  |  |  | 2020-11-01 | 2020-11-18 | 7d | 0d |  | مهندس بقایی; مهندس جعفری | 224h |  | 67,200,000 |  |  | 1399/8/26 | 1399/9/15 |
| 24 | 1.18.5 | درگاه پرداخت |  | 2d | 2020-12-06 | 2020-12-07 | 23 |  |  |  |  |  | 2020-11-21 | 2020-11-22 | 7d | 0d |  | مهندس بقایی; مهندس جعفری | 32h |  | 9,600,000 |  |  | 1399/9/16 | 1399/9/17 |
| 25 | 1.18.6 | وضعیت پرداخت |  | 2d | 2020-12-08 | 2020-12-09 | 24 |  |  |  |  |  | 2020-11-23 | 2020-11-24 | 7d | 0d |  | مهندس بقایی; مهندس جعفری | 32h |  | 9,600,000 |  |  | 1399/9/18 | 1399/9/19 |
| 26 | 1.18.7 | وضعیت سفارشات |  | 1d | 2020-12-12 | 2020-12-12 | 25 |  |  |  |  |  | 2020-11-25 | 2020-11-25 | 7d | 0d |  | مهندس بقایی | 8h |  | 2,400,000 |  |  | 1399/9/22 | 1399/9/22 |
| 27 | 1.18.8 | مکان یابی روی نقشه |  | 1d | 2020-12-13 | 2020-12-13 | 26 |  |  |  |  |  | 2020-11-28 | 2020-11-28 | 7d | 0d |  | مهندس بقایی | 8h |  | 2,400,000 |  |  | 1399/9/23 | 1399/9/23 |
| 28 | 1.18.9 | کیف پول |  | 2d | 2020-12-14 | 2020-12-15 | 27 |  |  |  |  |  | 2020-11-29 | 2020-11-30 | 7d | 0d |  | مهندس بقایی; مهندس جعفری | 32h |  | 9,600,000 |  |  | 1399/9/24 | 1399/9/25 |
| 29 | 1.18.10 | نحوه تحویل |  | 3d | 2020-12-16 | 2020-12-20 | 28 |  |  |  |  |  | 2020-12-01 | 2020-12-05 | 7d | 0d |  | مهندس بقایی; مهندس جعفری | 48h |  | 14,400,000 |  |  | 1399/9/26 | 1399/9/30 |
| 30 | 1.18.11 | نظرسنجی |  | 2d | 2020-12-21 | 2020-12-22 | 29 |  |  |  |  |  | 2020-12-06 | 2020-12-07 | 7d | 0d |  | مهندس بقایی; مهندس جعفری | 32h |  | 9,600,000 |  |  | 1399/10/1 | 1399/10/2 |
| 31 | 1.18.12 | سازکار رفع خطا |  | 2d | 2020-12-23 | 2020-12-26 | 30 |  |  |  |  |  | 2020-12-08 | 2020-12-09 | 7d | 0d |  | مهندس بقایی; مهندس جعفری | 32h |  | 9,600,000 |  |  | 1399/10/3 | 1399/10/6 |
| 32 | 1.18.13 | اتاق تبادل اطلاعات |  | 7d | 2020-12-27 | 2021-01-04 | 31 |  |  |  |  |  | 2020-12-12 | 2020-12-20 | 7d | 0d |  | مهندس بقایی; مهندس جعفری | 112h |  | 33,600,000 |  |  | 1399/10/7 | 1399/10/15 |
| 33 | 1.18.14 | کارتابل |  | 2d | 2021-01-05 | 2021-01-06 | 32 |  |  |  |  |  | 2020-12-21 | 2020-12-22 | 7d | 0d |  | مهندس بقایی; مهندس جعفری | 32h |  | 9,600,000 |  |  | 1399/10/16 | 1399/10/17 |
| 34 | 1.18.15 | موتور جستجو |  | 2d | 2021-01-09 | 2021-01-10 | 33 |  |  |  |  |  | 2020-12-23 | 2020-12-26 | 7d | 0d |  | مهندس بقایی | 16h |  | 4,800,000 |  |  | 1399/10/20 | 1399/10/21 |
| 35 | 1.19 | تست نسخه مقدماتی اپلیکیشن |  | 41d | 2020-11-18 | 2021-01-13 | 23SS+2d, 34FF+2d |  |  | 2020-10-14 | 2020-11-24 | 30d | 2020-11-03 | 2020-12-29 | 7d | 0d | finish no earlier than 2020-12-29 | مهندس جعفری | 328h |  | 98,400,000 | 72,000,000 |  | 1399/8/28 | 1399/10/24 |
| 36 | 1.20 | رفع خطاهای کشف شده در تست |  | 41d | 2020-11-18 | 2021-01-13 | 35SS |  |  | 2020-11-23 | 2020-12-06 | 10d | 2020-11-03 | 2020-12-29 | 7d | 0d | finish no earlier than 2020-10-03 | مهندس بقایی | 328h |  | 98,400,000 | 24,000,000 |  | 1399/8/28 | 1399/10/24 |
| 37 | 1.21 | تحویل فرم های آماده شده |  | 41d | 2020-11-29 | 2021-01-24 | 36SS+7d |  |  | 2020-10-25 | 2020-12-05 | 30d | 2020-11-14 | 2021-01-09 | 0d |  |  | آقای بقایی; مهندس جعفری | 656h |  | 262,400,000 | 192,000,000 |  | 1399/9/9 | 1399/11/5 |
| 38 | 1.22 | تهیه و تنظیم دستورالعمل کار با بانک داده |  | 1d | 2021-01-11 | 2021-01-11 | 34 |  |  | 2020-10-11 | 2020-10-11 | 1d | 2020-10-11 | 2020-10-11 | 7d | 0d |  | مهندس بقایی; مهندس جعفری | 16h |  | 4,800,000 | 2,400,000 |  | 1399/10/22 | 1399/10/22 |
| 39 | 1.23 | تهیه سند بانک داده |  | 2d | 2021-01-12 | 2021-01-13 | 38 |  |  | 2020-10-12 | 2020-10-13 | 2d | 2020-10-12 | 2020-10-13 | 7d |  | start no earlier than 2020-10-12 | مهندس جعفری; مهندس بقایی | 32h |  | 9,600,000 | 4,800,000 |  | 1399/10/23 | 1399/10/24 |
